Schedule from MS Project, 2009-04-10 to 2009-10-26.
Microsoft

## Calendars

- 标准: Mon-Fri 08:00-12:00, 13:00-17:00; Sat-Sun off. Exceptions (off unless hours are given): 2009-10-01 to 2009-10-02, 2009-10-05 to 2009-10-06.

## Resources

| Resource |
| --- |
| Jerry |
| Jim |
| Tony |
| Alan |
| Canature IT |
| Graly |
| Canature |
| Denny |
| 2009年8月28日 |
| Tony?? |
| 集成测试 |
| 2009年8月18日 |

## Schedule

| ID | WBS | Task | Duration | Start | Finish | Predecessors | Total slack | Free slack | Constraint | Resources | Work | Text1 |
| --- | --- | --- | --- | --- | --- | --- | --- | --- | --- | --- | --- | --- |
| 1 | 1 | **详细设计** | 51d? | 2009-04-10 | 2009-06-19 |  | 87d |  |  |  | 464h |  |
| 2 | 1.1 | 功能设计 | 44d? | 2009-04-10 | 2009-06-10 |  | 87d | 0d | finish no earlier than 2009-06-10 | Graly | 352h | 完成主要页面的设计及简单功能开发 |
| 3 | 1.2 | 用户确认 | 7d? | 2009-06-11 | 2009-06-19 | 2 | 87d |  | finish no earlier than 2009-06-19 | Canature; Graly | 112h |  |
| 4 | 2 | **功能开发** | 58d? | 2009-06-08 | 2009-08-26 |  | 39d |  |  |  | 2736h |  |
| 5 | 2.1 | 供应商管理 | 10d? | 2009-06-08 | 2009-06-19 |  | 87d |  | start no earlier than 2009-06-08 | Tony; Jerry | 160h |  |
| 6 | 2.2 | 物料管理/BOM设置 | 10d? | 2009-06-08 | 2009-06-19 |  | 87d |  | start no earlier than 2009-06-08 | Tony; Jim | 160h |  |
| 7 | 2.3 | 主生产计划生成及管理 | 10d? | 2009-06-22 | 2009-07-03 |  | 77d |  | start no earlier than 2009-06-22 | Tony; Jerry | 160h |  |
| 8 | 2.4 | 采购管理 | 10d? | 2009-06-22 | 2009-07-03 |  | 77d |  | start no earlier than 2009-06-22 | Tony; Jim | 160h |  |
| 9 | 2.5 | 仓库管理 | 15d? | 2009-07-06 | 2009-07-24 |  | 62d |  | start no earlier than 2009-07-06 | Tony; Jim; Jerry | 360h |  |
| 10 | 2.6 | 生产排程 | 20d? | 2009-07-06 | 2009-07-31 |  | 57d |  | start no earlier than 2009-07-06 | Tony?? | 160h |  |
| 11 | 2.7 | 生产管理 | 15d? | 2009-07-20 | 2009-08-07 |  | 52d |  | start no earlier than 2009-07-20 | Tony; Jim | 240h |  |
| 12 | 2.8 | 警报管理 | 10d? | 2009-07-27 | 2009-08-07 |  | 52d |  | start no earlier than 2009-07-27 | Tony; Jerry | 160h |  |
| 13 | 2.9 | 报表及打印功能 | 45d? | 2009-06-08 | 2009-08-07 |  | 52d |  | finish no earlier than 2009-08-07 | Tony; Denny | 720h | 主要包括简单的查询报表及打印功能 |
| 14 | 2.10 | 与CRM的整合 | 5d? | 2009-08-10 | 2009-08-14 |  | 47d |  | start no earlier than 2009-08-10 | Tony; Denny | 80h |  |
| 15 | 2.11 | 其它功能 | 5d? | 2009-08-10 | 2009-08-14 |  | 47d |  | finish no earlier than 2009-08-14 | Tony; Jim; Jerry | 120h |  |
| 16 | 2.12 | 集成测试 | 8d? | 2009-08-17 | 2009-08-26 |  | 39d |  | finish no earlier than 2009-08-26 | Tony; Jim; Jerry; Denny | 256h |  |
| 17 | 3 | **用户培训及测试** | 20d? | 2009-08-24 | 2009-09-18 |  | 22d |  |  |  |  |  |
| 18 | 3.1 | 用户培训数据及环境设置 | 3d? | 2009-08-24 | 2009-08-26 |  | 39d |  | finish no earlier than 2009-08-26 |  |  |  |
| 19 | 3.2 | 用户培训 | 7d? | 2009-08-27 | 2009-09-04 |  | 32d |  | finish no earlier than 2009-09-04 |  |  |  |
| 20 | 3.3 | UAT测试 | 15d? | 2009-08-31 | 2009-09-18 |  | 22d |  | start no earlier than 2009-08-31 |  |  |  |
| 21 | 4 | **系统上线** | 26d? | 2009-09-14 | 2009-10-23 |  | 1d |  |  |  | 224h |  |
| 22 | 4.1 | 数据准备及环境设置 | 8d? | 2009-09-14 | 2009-09-23 |  | 1d | 0d | finish no earlier than 2009-09-23 | Canature IT | 64h |  |
| 23 | 4.2 | 系统上线 | 1d? | 2009-09-24 | 2009-09-24 | 22 | 1d | 0d |  | Graly; Canature | 16h |  |
| 24 | 4.3 | 系统支持及文档交付 | 16d? | 2009-09-25 | 2009-10-22 | 23 | 1d | 0d | start no earlier than 2009-09-25 | Graly | 128h |  |
| 25 | 4.4 | 用户验收 | 1d? | 2009-10-23 | 2009-10-23 | 24 | 1d |  |  | Graly; Canature | 16h |  |

| ID | WBS | Task | Duration | Start | Finish | Total slack | Constraint | Text1 |
| --- | --- | --- | --- | --- | --- | --- | --- | --- |
| 26 | 5 | **其它遗留功能** | 1d? | 2009-10-26 | 2009-10-26 | 0d |  | 这一部分内容，与大壮商量，最好在上线完成，系统比较稳定时再进行 |
| 27 | 5.1 | 财务接口 | 1d? | 2009-10-26 | 2009-10-26 | 0d | start no earlier than 2009-10-26 |  |
| 28 | 5.2 | 复杂报表 | 1d? | 2009-10-26 | 2009-10-26 | 0d | start no earlier than 2009-10-26 | 这一部分主要包括：供应商评价、库存统计、暂估清单、价格核销、标准工时计算、工时统计 |

Notes:
- 26: 这一部分内容，与大壮商量，最好在上线完成，系统比较稳定时再进行
- 28: 这一部分主要包括：供应商评价、库存统计、暂估清单、价格核销、标准工时计算、工时统计
